# SVENG202409072200R04 EEE Reserva dos Ipês

Schedule from Planner, 2025-02-24 to 2025-05-22.
BJNOBRE Engenharia

## Calendars

- Padrão: Mon-Fri 08:00-12:00, 13:00-17:00; Sat-Sun off. Exceptions (off unless hours are given): 2025-03-03 to 2025-03-04.

## Resources

| Resource | Group | Rate | Notes |
| --- | --- | --- | --- |
| Bene | Adm |  |  |
| Cezar | Civil |  |  |
| Pedreiro1 | Civil |  |  |
| Servente1 | Civil |  |  |
| Servente2 | Civil |  |  |
| Eletricista & Hidráulicista | Hid/Ele |  |  |
| Ajudante de ordem | Adm |  |  |
| Munck PQ | Equip |  |  |
| Escavadeira | Equip |  |  |
| Pintor1 | Civil |  |  |
| Ajudante de eletricista | Hid/Ele |  |  |
| Pedreiro2 | Civil |  |  |
| Moto-bomba | Equip |  |  |
| mat[Concreto usinado 30mPA] | Civil |  |  |
| Gerador 3kVA | Equip | 2500 |  |
| Topógrafo | Cliente |  |  |
| mat[Carga de pedra Rachão [5m³]] | Civil |  | 3m x 3m x 0,5m |
| mat[Madeira para caixaria] | Civil |  | * 4x 3m x 30cm x 3cm / * Pregos [] / * Arame recozido |
| mat[Kit Impermeabilização] | Civil |  | * Impermeabilizante / * Rolo de pintura / * Pincel |
| mat[Guindaste] | Equip |  |  |
| mat[Moto-compactador] | Equip |  |  |

## Schedule

| ID | WBS | Task | Type | Duration | Start | Finish | Predecessors | Complete | Constraint | Resources | Work |
| --- | --- | --- | --- | --- | --- | --- | --- | --- | --- | --- | --- |
| 1 | 1 | **GERAL** |  | 15d | 2025-02-24 | 2025-03-18 |  |  |  |  | 30h |
| 2 | 1.1 | **Contratação** |  | 1d | 2025-02-24 | 2025-02-24 |  |  |  |  | 1h |
| 3 | 1.1.1 | Assinatura contrato |  | 1d | 2025-02-24 | 2025-02-24 |  | 100% |  | Bene [13%] | 1h |
| 4 | 1.2 | **Financeiro** |  | 14d | 2025-02-25 | 2025-03-18 |  |  |  |  | 1h |
| 5 | 1.2.1 | Emissão da NF0 |  | 1d | 2025-02-25 | 2025-02-25 | 3 | 100% |  | Bene [13%] | 1h |
| 6 | 1.2.2 | Recebimento NF0 | milestone | 0d | 2025-03-18 | 2025-03-18 | 5FS+504h |  |  | Bene |  |
| 7 | 1.3 | **Mobilização/Desmob** |  | 2d | 2025-02-27 | 2025-02-28 | 2FS+24h |  |  |  | 18h |
| 8 | 1.3.1 | Instalar canteiro de obras |  | 0.67d | 2025-02-27 | 2025-02-27 |  | 75% | start no earlier than 2025-02-27 | Bene; Cezar; Pedreiro1 | 16h |
| 9 | 1.3.2 | Locar gerador |  | 1d | 2025-02-28 | 2025-02-28 |  | 100% | start no earlier than 2025-02-28 |  | 2h |
| 10 | 1.4 | **Aquisições** |  | 3d | 2025-02-26 | 2025-03-01 | 2FS+24h |  |  |  | 10h |
| 11 | 1.4.1 | **Outras** |  | 3d | 2025-02-26 | 2025-03-01 |  |  |  |  | 10h |
| 12 | 1.4.1.1 | **Insumos concreto manual** |  | 3d | 2025-02-26 | 2025-03-01 |  |  |  |  | 2h |
| 13 | 1.4.1.1.1 | Comprar madeiramento |  | 2d | 2025-02-26 | 2025-02-27 |  |  |  | Bene [13%] | 2h |
| 14 | 1.4.1.1.2 | Receber madeiramento | milestone | 0d | 2025-03-05 | 2025-03-01 | 13FS+48h |  |  | Bene |  |
| 15 | 1.4.1.2 | Materiais abrigos |  | 1d | 2025-02-26 | 2025-02-26 |  |  |  |  | 8h |
| 16 | 2 | **CIVIL** |  | 42.62d | 2025-03-05 | 2025-05-02 | 2FS+24h |  |  |  | 541h |
| 17 | 2.1 | **Preparação** |  | 30d | 2025-03-05 | 2025-04-15 |  |  |  |  | 40h |
| 18 | 2.1.1 | Drenar poço |  | 30d | 2025-03-05 | 2025-04-15 |  |  | start no earlier than 2025-03-01 | Cezar [7%]; Moto-bomba [7%] | 32h |
| 19 | 2.1.2 | Locar estruturas com topógrafo cliente |  | 1d | 2025-03-05 | 2025-03-05 |  |  | must start on 2025-03-05 | Bene [50%]; Topógrafo [50%] | 8h |
| 20 | 2.1.3 | **[descartada] Contencionamento** |  | 0d | 2025-03-05 | 2025-03-05 |  |  |  |  |  |
| 21 | 2.1.3.1 | **Materiais** |  | 0d | 2025-03-05 | 2025-03-05 |  |  |  |  |  |
| 22 | 2.1.3.1.1 | Comprar |  | 0d | 2025-03-05 | 2025-03-05 | 18SS+48h |  |  | Bene |  |
| 23 | 2.1.3.1.2 | Receber | milestone | 0d | 2025-03-05 | 2025-03-05 | 22 |  | start no earlier than 2025-03-05 | Bene |  |
| 24 | 2.1.3.2 | Fazer contenção em madeira |  | 0d | 2025-03-05 | 2025-03-05 | 23, 18SS+24h |  |  |  |  |

Notes:
- 1: Data limite para entrega da obra: 24/06/2025
- 5: qui 27 fev 2025, 10:27 > NFSe 033 53130537000132 - GT003_MED_INICIAL

| ID | WBS | Task | Type | Duration | Start | Finish | Predecessors | Constraint | Resources | Work |
| --- | --- | --- | --- | --- | --- | --- | --- | --- | --- | --- |
| 25 | 2.2 | **Poço 7m** |  | 14.62d | 2025-03-05 | 2025-03-25 |  |  |  | 212h |
| 26 | 2.2.1 | **Insumos** |  | 3d | 2025-03-05 | 2025-03-09 |  |  |  | 2h |
| 27 | 2.2.1.1 | Comprar |  | 2d | 2025-03-05 | 2025-03-06 |  | start no earlier than 2025-03-05 | Bene [13%] | 2h |
| 28 | 2.2.1.2 | Receber | milestone | 0d | 2025-03-10 | 2025-03-09 | 27FS+72h | start no earlier than 2025-03-05 | Bene |  |
| 29 | 2.2.2 | Limpar área de construção |  | 2d | 2025-03-06 | 2025-03-07 |  | start no earlier than 2025-03-06 | Servente1; Escavadeira | 32h |
| 30 | 2.2.3 | **Radier poço 7m** |  | 2.62d | 2025-03-10 | 2025-03-12 |  |  |  | 24h |
| 31 | 2.2.3.1 | Lançar pedra rachão |  | 1d | 2025-03-10 | 2025-03-10 | 29, 26 |  | Cezar [25%]; Servente2 [25%]; Escavadeira [25%]; mat[Carga de pedra Rachão [5m³]] [25%] | 8h |
| 32 | 2.2.3.2 | Locar malha radier poço 7m |  | 1d | 2025-03-11 | 2025-03-11 | 31 |  | Pedreiro1 [33%]; Servente2 [33%]; mat[Madeira para caixaria] [33%] | 8h |
| 33 | 2.2.3.3 | Concretar radier poço 7m |  | 0.62d | 2025-03-12 | 2025-03-12 | 26, 32 |  | Cezar [40%]; Pedreiro1 [40%]; Servente2 [40%]; mat[Concreto usinado 30mPA] [40%] | 8h |
| 34 | 2.2.4 | **Aduelas** |  | 14.62d | 2025-03-05 | 2025-03-25 |  |  |  | 74h |
| 35 | 2.2.4.1 | Marcar trincas nas aduelas |  | 0.25d | 2025-03-05 | 2025-03-05 |  | start no earlier than 2025-03-05 | Bene | 2h |
| 36 | 2.2.4.2 | Limpar |  | 2d | 2025-03-05 | 2025-03-06 |  | start no earlier than 2025-03-01 | Servente1 [50%] | 8h |
| 37 | 2.2.4.3 | Impermeabilizar [externo] |  | 3d | 2025-03-05 | 2025-03-07 |  | start no earlier than 2025-03-05 | Servente2 [33%]; mat[Kit Impermeabilização] [33%] | 16h |
| 38 | 2.2.4.4 | Instalar |  | 1d | 2025-03-19 | 2025-03-20 | 33FS+168h, 37 |  | Cezar [150%]; Servente1 [150%] | 24h |
| 39 | 2.2.4.5 | Vedar junções |  | 1d | 2025-03-20 | 2025-03-21 | 38 |  |  | 8h |
| 40 | 2.2.4.6 | Imperm. [interno] |  | 2d | 2025-03-21 | 2025-03-25 | 39 |  |  | 16h |
| 41 | 2.2.5 | Aterrar fosso [primeiro metro] |  | 5d | 2025-03-13 | 2025-03-20 | 37FS+24h, 33FS+24h |  | Servente1; Servente2 | 80h |
| 42 | 2.3 | **Poço 5m e reservatórios emergência** |  | 19d | 2025-03-20 | 2025-04-16 | 38 |  |  | 169h |
| 43 | 2.3.1 | **Insumos** |  | 2d | 2025-03-20 | 2025-03-24 |  |  |  | 8h |
| 44 | 2.3.1.1 | Comprar |  | 1d | 2025-03-20 | 2025-03-21 |  |  |  | 8h |
| 45 | 2.3.1.2 | Receber | milestone | 0d | 2025-03-24 | 2025-03-24 | 44FS+72h |  |  |  |
| 46 | 2.3.2 | **Radier reservatórios** |  | 4d | 2025-03-24 | 2025-03-28 | 41, 43 |  |  | 32h |
| 47 | 2.3.2.1 | Lançar pedra rachão |  | 2d | 2025-03-24 | 2025-03-26 |  |  |  | 16h |
| 48 | 2.3.2.2 | Locar malha rediers |  | 1d | 2025-03-26 | 2025-03-27 | 47 |  |  | 8h |
| 49 | 2.3.2.3 | Concretar radiers |  | 1d | 2025-03-27 | 2025-03-28 | 48 |  |  | 8h |

Notes:
- 27: * Rachão [3x3x0,5=4,5m³] / * Concreto 40mPA [2,5x2,5x0,2=1,5m³] / * Tábua 4x 3m x 30cm x 3cm / * 2kg Pregos [] / * 1kg Arame recozido
- 28: Concreto 30mPA / Carga de pedra rachão
- 32: Tábuas para limitar bloco de concreto

| ID | WBS | Task | Type | Duration | Start | Finish | Predecessors | Resources | Work |
| --- | --- | --- | --- | --- | --- | --- | --- | --- | --- |
| 50 | 2.3.3 | **Aduelas** |  | 19d | 2025-03-20 | 2025-04-16 |  |  | 121h |
| 51 | 2.3.3.1 | **Preparação** |  | 6d | 2025-03-20 | 2025-03-28 |  |  | 48h |
| 52 | 2.3.3.1.1 | Limpar |  | 2d | 2025-03-20 | 2025-03-24 |  |  | 16h |
| 53 | 2.3.3.1.2 | Furar aduelas para trava das bonecas |  | 4d | 2025-03-24 | 2025-03-28 | 52 |  | 32h |
| 54 | 2.3.3.2 | Impermeabilizar [externo] |  | 2d | 2025-03-28 | 2025-04-01 | 51 |  | 16h |
| 55 | 2.3.3.3 | Instalar |  | 1d | 2025-04-01 | 2025-04-02 | 46, 54 |  | 8h |
| 56 | 2.3.3.4 | **Bonecas aduelas de 2,5m** |  | 16d | 2025-03-20 | 2025-04-11 |  |  | 33h |
| 57 | 2.3.3.4.1 | **Materiais** |  | 4d | 2025-03-20 | 2025-03-26 |  |  | 1h |
| 58 | 2.3.3.4.1.1 | Comprar |  | 2d | 2025-03-20 | 2025-03-24 |  | Bene [6%] | 1h |
| 59 | 2.3.3.4.1.2 | Receber | milestone | 0d | 2025-03-26 | 2025-03-26 | 58FS+48h | Bene |  |
| 60 | 2.3.3.4.2 | Montar caixaria |  | 2d | 2025-04-03 | 2025-04-07 | 55FS+24h, 57 |  | 16h |
| 61 | 2.3.3.4.3 | Concretar bonecas |  | 1d | 2025-04-07 | 2025-04-08 | 60 | Pedreiro1 [50%]; Servente1 [50%] | 8h |
| 62 | 2.3.3.4.4 | Remover caixaria |  | 1d | 2025-04-10 | 2025-04-11 | 61FS+48h |  | 8h |
| 63 | 2.3.3.5 | Vedar junções |  | 2d | 2025-04-11 | 2025-04-15 | 56 |  | 8h |
| 64 | 2.3.3.6 | Imperm. [interno] |  | 1d | 2025-04-15 | 2025-04-16 | 63 |  | 8h |
| 65 | 2.3.4 | Aterrar fosso |  | 10d | 2025-04-02 | 2025-04-16 | 54FS+24h |  | 8h |
| 66 | 2.4 | **Tampas reservatórios** |  | 12d | 2025-04-16 | 2025-05-02 | 42, 25 |  | 32h |
| 67 | 2.4.1 | Montar estruturas tampas |  | 2d | 2025-04-16 | 2025-04-18 |  |  | 16h |
| 68 | 2.4.2 | Concretar tampas |  | 1d | 2025-04-18 | 2025-04-21 | 67 |  | 8h |
| 69 | 2.4.3 | Instalar tampas |  | 1d | 2025-05-01 | 2025-05-02 | 68FS+240h |  | 8h |
| 70 | 2.5 | **Terreno** |  | 1d | 2025-04-02 | 2025-04-03 | 55 |  | 8h |
| 71 | 2.5.1 | Aterrar terreno |  | 1d | 2025-04-02 | 2025-04-03 |  |  | 8h |
| 72 | 2.6 | **Abrigo painéis e gerador** |  | 12.46d | 2025-04-03 | 2025-04-22 | 70 |  | 80h |
| 73 | 2.6.1 | Elaborar desenhos |  | 0.25d | 2025-04-03 | 2025-04-03 |  |  | 8h |
| 74 | 2.6.2 | Listar materiais |  | 1d | 2025-04-04 | 2025-04-07 | 73FS+24h |  | 2h |

| ID | WBS | Task | Type | Duration | Start | Finish | Predecessors | Constraint | Resources | Work |
| --- | --- | --- | --- | --- | --- | --- | --- | --- | --- | --- |
| 75 | 2.6.3 | **Construir abrigos** |  | 10.21d | 2025-04-07 | 2025-04-22 | 74 |  |  | 70h |
| 76 | 2.6.3.1 | Preparar terreno |  | 1d | 2025-04-07 | 2025-04-08 |  |  | Pedreiro1 [25%]; Servente1 [25%] | 4h |
| 77 | 2.6.3.2 | Construir radier e baldrames |  | 3.03d | 2025-04-08 | 2025-04-11 | 76 |  | Cezar [33%]; Pedreiro1 [33%]; Servente1 [33%] | 24h |
| 78 | 2.6.3.3 | Construir paredes |  | 2d | 2025-04-14 | 2025-04-15 | 77FS+48h |  | Cezar [33%]; Pedreiro1 [33%]; Servente2 [33%] | 16h |
| 79 | 2.6.3.4 | Rebocar |  | 1d | 2025-04-16 | 2025-04-16 | 78 |  |  | 8h |
| 80 | 2.6.3.5 | Construir laje de cobertura |  | 1d | 2025-04-07 | 2025-04-08 |  |  |  | 8h |
| 81 | 2.6.3.6 | Instalar laje de cobertura |  | 0.08d | 2025-04-21 | 2025-04-21 | 79FS+48h, 80FS+240h |  | Cezar; Servente1; Munck PQ | 2h |
| 82 | 2.6.3.7 | Pintar |  | 1d | 2025-04-21 | 2025-04-22 | 81 |  | Pintor1 | 8h |
| 83 | 3 | **HIDRÁULICA** |  | 50d | 2025-03-07 | 2025-05-15 | 2FS+24h |  |  | 196h |
| 84 | 3.1 | Revisar mat. hidráulico |  | 1d | 2025-04-02 | 2025-04-03 | 55 |  | Bene | 8h |
| 85 | 3.2 | **Mat. hidráulico** |  | 10d | 2025-04-03 | 2025-04-17 | 84 |  |  | 2h |
| 86 | 3.2.1 | Comprar |  | 2d | 2025-04-03 | 2025-04-07 |  |  | Bene [13%] | 2h |
| 87 | 3.2.2 | Receber | milestone | 0d | 2025-04-17 | 2025-04-17 | 86FS+240h |  | Bene |  |
| 88 | 3.3 | Instalar tubulações e válvulas |  | 10d | 2025-04-17 | 2025-05-01 | 85 |  |  | 80h |
| 89 | 3.4 | Instalar comportas |  | 5d | 2025-04-17 | 2025-04-24 | 85 |  |  | 40h |
| 90 | 3.5 | **Bombas d'água** |  | 46d | 2025-03-07 | 2025-05-09 |  |  |  | 2h |
| 91 | 3.5.1 | Comprar |  | 2d | 2025-03-07 | 2025-03-10 | 2FS+240h |  | Bene [13%] | 2h |
| 92 | 3.5.2 | Receber | milestone | 0d | 2025-05-09 | 2025-05-09 | 91FS+1440h |  | Bene |  |
| 93 | 3.6 | Instalar bombas |  | 4d | 2025-05-12 | 2025-05-15 | 92 |  | Eletricista & Hidráulicista; Ajudante de eletricista | 64h |
| 94 | 4 | **ELÉTRICA** |  | 49d | 2025-03-10 | 2025-05-15 | 2FS+24h |  |  | 298h |
| 95 | 4.1 | **Painéis elétricos** |  | 30d | 2025-03-10 | 2025-04-18 |  |  |  | 170h |
| 96 | 4.1.1 | Revisar projeto e listar materiais |  | 1d | 2025-03-10 | 2025-03-10 |  | start no earlier than 2025-03-10 |  | 8h |
| 97 | 4.1.2 | **Mat. elétrico [painéis]** |  | 9d | 2025-03-11 | 2025-03-22 | 96 |  |  | 2h |
| 98 | 4.1.2.1 | Comprar |  | 2d | 2025-03-11 | 2025-03-12 |  |  | Bene [13%] | 2h |
| 99 | 4.1.2.2 | Receber | milestone | 0d | 2025-03-24 | 2025-03-22 | 98FS+240h |  | Bene |  |
| 100 | 4.1.3 | Montar painéis elétricos |  | 20d | 2025-03-24 | 2025-04-18 | 97 |  |  | 160h |

Notes:
- 80: Laje será construída fora depois instalada sobre a alvenaria

| ID | WBS | Task | Type | Duration | Start | Finish | Predecessors | Constraint | Resources | Work |
| --- | --- | --- | --- | --- | --- | --- | --- | --- | --- | --- |
| 101 | 4.2 | **Infra-estrutura** |  | 34d | 2025-03-31 | 2025-05-15 |  |  |  | 128h |
| 102 | 4.2.1 | Revisar projeto e listar materiais |  | 2d | 2025-03-31 | 2025-04-01 |  | start no earlier than 2025-03-31 | Bene [25%] | 4h |
| 103 | 4.2.2 | **Mat. elétrico [infra]** |  | 6d | 2025-04-02 | 2025-04-09 |  |  |  | 4h |
| 104 | 4.2.2.1 | Comprar |  | 3d | 2025-04-02 | 2025-04-04 | 102 |  | Bene [17%] | 4h |
| 105 | 4.2.2.2 | Receber padrão | milestone | 0d | 2025-04-07 | 2025-04-06 | 104FS+48h |  | Bene |  |
| 106 | 4.2.2.3 | Receber infra | milestone | 0d | 2025-04-09 | 2025-04-09 | 104FS+120h |  | Bene |  |
| 107 | 4.2.3 | Instalar padrão |  | 1d | 2025-04-07 | 2025-04-07 | 105 |  | Eletricista & Hidráulicista; Ajudante de eletricista | 16h |
| 108 | 4.2.4 | Pedir ligação nova Energisa | milestone | 0d | 2025-04-08 | 2025-04-08 | 107FS+24h |  |  |  |
| 109 | 4.2.5 | Instalar componentes |  | 7d | 2025-04-22 | 2025-05-01 | 75, 100 |  |  | 56h |
| 110 | 4.2.6 | Instalar Bombas |  | 4d | 2025-05-12 | 2025-05-15 | 90FS+24h |  |  | 32h |
| 111 | 4.2.7 | Iluminação e tomadas |  | 1d | 2025-05-01 | 2025-05-02 | 109 |  | Eletricista & Hidráulicista; Ajudante de eletricista | 16h |
| 112 | 5 | **COMISSIONAMENTO** |  | 2d | 2025-05-19 | 2025-05-20 |  |  |  | 32h |
| 113 | 5.1 | Testar circuito hidráulico |  | 2d | 2025-05-19 | 2025-05-20 | 83FS+48h |  |  | 16h |
| 114 | 5.2 | Testar elétrica |  | 2d | 2025-05-19 | 2025-05-20 | 94FS+48h |  |  | 16h |
| 115 | 6 | **ENCERRAMENTO** |  | 2d | 2025-05-20 | 2025-05-22 | 112 |  |  | 16h |
| 116 | 6.1 | Atividades encerradas | milestone | 0d | 2025-05-20 | 2025-05-20 |  |  |  |  |
| 117 | 6.2 | Desmobilizar canteiro de obras |  | 2d | 2025-05-21 | 2025-05-22 | 116 |  |  | 16h |
| 118 | 6.3 | Fim do projeto | milestone | 0d | 2025-05-22 | 2025-05-22 | 117 |  |  |  |

Notes:
- 104: Painéis / Cabeamento / Boias / Padrão / Iluminação
- 109: Boias / Luminárias em poste
